# C44_Integration_milestones

Schedule from MS Project, 2016-04-04 to 2016-06-03.

## Calendars

- Standard: Mon-Fri 08:00-12:00, 13:00-17:00; Sat-Sun off.

## Schedule

| ID | WBS | Task | Type | Duration | Start | Finish | Predecessors | Total slack | Free slack | Constraint |
| --- | --- | --- | --- | --- | --- | --- | --- | --- | --- | --- |
| 1 | 1 | **Integration Complete** |  | 28d | 2016-04-04 | 2016-05-11 |  | 17d |  |  |
| 2 | 1.1 | Robot can pick up obj from markers |  | 1w | 2016-05-05 | 2016-05-11 | 3, 12 | 17d |  |  |
| 3 | 1.2 | Obj Seg node outputs usable markers |  | 1w | 2016-04-28 | 2016-05-04 | 4 | 17d | 0d |  |
| 4 | 1.3 | **Verify markers are usable with acceptable error** |  | 6d | 2016-04-20 | 2016-04-27 |  | 17d | 0d |  |
| 5 | 1.3.1 | Determine acceptable error |  | 1w | 2016-04-21 | 2016-04-27 | 6 | 17d |  |  |
| 6 | 1.3.2 | Measure error in output markers |  | 1d | 2016-04-20 | 2016-04-20 | 7, 13 | 17d | 0d |  |
| 7 | 1.4 | Obj Seg node outputs markers |  | 1d | 2016-04-12 | 2016-04-12 | 8, 9 | 22d | 5d |  |
| 8 | 1.5 | RVIZ can view Point Cloud 2 and Markers |  | 1d | 2016-04-04 | 2016-04-04 |  | 27d | 5d | start no earlier than 2016-04-04 |
| 9 | 1.6 | OBB descriptor to Marker desc. Conversion enabled |  | 1d | 2016-04-11 | 2016-04-11 | 10, 11 | 22d | 0d |  |
| 10 | 1.7 | Make obj seg node configurable |  | 1w | 2016-04-04 | 2016-04-08 |  | 22d | 0d | start no earlier than 2016-04-04 |
| 11 | 1.8 | Provide dummy node for obj seg to arm team |  | 1d | 2016-04-04 | 2016-04-04 |  | 26d | 4d | start no earlier than 2016-04-04 |
| 12 | 1.9 | Hand Seg node outputs usable marker |  | 1w | 2016-04-28 | 2016-05-04 | 4 | 17d | 0d |  |
| 13 | 1.10 | Hand seg node outputs markers |  | 1d | 2016-04-19 | 2016-04-19 | 14 | 17d | 0d |  |
| 14 | 1.11 | Object recognition can segment hand |  | 1w | 2016-04-12 | 2016-04-18 | 15, 16 | 17d | 0d |  |
| 15 | 1.12 | Obtain good reference PCD of hand |  | 1d | 2016-04-05 | 2016-04-05 | 17 | 21d | 4d |  |
| 16 | 1.13 | PCL object recognition pipeline can finish within time constraints. |  | 1w | 2016-04-05 | 2016-04-11 | 17 | 17d | 0d |  |
| 17 | 1.14 | Provide dummy node for hand segmentation to arm team |  | 1d | 2016-04-04 | 2016-04-04 |  | 17d | 0d | start no earlier than 2016-04-04 |
| 18 | 2 | **Research Paper Complete** |  | 45d | 2016-04-04 | 2016-06-03 |  | 0d |  |  |
| 19 | 2.1 | Revise Final Draft |  | 1w | 2016-05-30 | 2016-06-03 | 20 | 0d |  |  |
| 20 | 2.2 | Revised by three different peers |  | 1w | 2016-05-23 | 2016-05-27 | 21 | 0d |  |  |
| 21 | 2.3 | Draft 1 Complete |  | 1w | 2016-05-16 | 2016-05-20 | 22, 23 | 0d |  |  |
| 22 | 2.4 | Research Complete |  | 1mo | 2016-04-18 | 2016-05-13 | 24 | 0d |  |  |
| 23 | 2.5 | Data Gathered |  | 1mo | 2016-04-18 | 2016-05-13 | 24 | 0d |  |  |
| 24 | 2.6 | Topic Chosen | manual | 2w | 2016-04-04 | 2016-04-15 |  |  |  |  |

| ID | WBS | Task | Type | Duration | Start | Finish | Predecessors | Total slack | Free slack | Constraint |
| --- | --- | --- | --- | --- | --- | --- | --- | --- | --- | --- |
| 25 | 3 | **PCL Research GUI Complete** |  | 29d? | 2016-04-04 | 2016-05-12 |  | 0d |  |  |
| 26 | 3.1 | Basic Algorithm Pipelines Implemented |  | 1mo | 2016-04-15 | 2016-05-12 | 27 | 16d |  |  |
| 27 | 3.2 | Basic Functionaliy Implemented |  | 1d | 2016-04-14 | 2016-04-14 | 28, 38, 42, 46, 33 | 16d | 0d |  |
| 28 | 3.3 | **PCL Pipeline Functionality Implemented** |  | 3d | 2016-04-11 | 2016-04-13 | 37 | 16d | 0d |  |
| 29 | 3.3.1 | Configurtion Menu for Algorithms Implmented |  | 1d | 2016-04-13 | 2016-04-13 | 30 | 16d |  |  |
| 30 | 3.3.2 | Configuration Menu GUI designed in Modular Way |  | 2d | 2016-04-11 | 2016-04-12 | 37 | 16d | 0d |  |
| 31 | 3.3.3 | Can open Saved list of applied algorithms and their configurations |  | 1d | 2016-04-12 | 2016-04-12 | 32 | 17d |  |  |
| 32 | 3.3.4 | Can Save list of applied alogrithms and configurations |  | 1d | 2016-04-11 | 2016-04-11 | 37 | 17d | 0d |  |
| 33 | 3.3.5 | **Algorithm List Menu implemented** |  | 3d | 2016-04-11 | 2016-04-13 | 37 | 16d | 0d |  |
| 34 | 3.3.5.1 | Can revert alogrithm |  | 1d | 2016-04-13 | 2016-04-13 | 36 | 16d |  |  |
| 35 | 3.3.5.2 | can configure algortihm |  | 1d | 2016-04-13 | 2016-04-13 | 36 | 16d |  |  |
| 36 | 3.3.5.3 | can Apply algorithm |  | 2d | 2016-04-11 | 2016-04-12 | 37 | 16d | 0d |  |
| 37 | 3.4 | Algorithm Class Implemented (if Appl.) |  | 1w | 2016-04-04 | 2016-04-08 |  | 16d | 0d | start no earlier than 2016-04-04 |
| 38 | 3.5 | **File Functionality Complete** |  | 1d | 2016-04-04 | 2016-04-04 |  |  |  |  |
| 39 | 3.5.1 | Load PCD | manual | 1d | 2016-04-04 | 2016-04-04 |  |  |  |  |
| 40 | 3.5.2 | Save PCD | manual | 1d | 2016-04-05 | 2016-04-05 | 39 |  |  |  |
| 41 | 3.5.3 | Reload PCD | manual | 1d | 2016-04-06 | 2016-04-06 | 40 |  |  |  |
| 42 | 3.6 | **ROS Functionality Complete** |  | 2d | 2016-04-11 | 2016-04-12 |  |  |  |  |
| 43 | 3.6.1 | Subscribe to Depth Topic | manual | 1d | 2016-04-11 | 2016-04-11 |  |  |  |  |
| 44 | 3.6.2 | Publish to variable topic | manual | 2d | 2016-04-11 | 2016-04-12 |  |  |  |  |
| 45 | 3.6.3 | Configurable VIA launch/preset file | manual | 2d | 2016-04-11 | 2016-04-12 |  |  |  |  |
| 46 | 3.7 | **Visualization Implemented** |  | 3d | 2016-04-11 | 2016-04-13 |  |  |  |  |
| 47 | 3.7.1 | Can Display updated PointCloud | manual | 1d | 2016-04-11 | 2016-04-11 |  |  |  |  |
| 48 | 3.7.2 | Can Display Bounding box (or marker) | manual | 3d | 2016-04-11 | 2016-04-13 |  |  |  |  |
| 49 | 3.7.3 | Can Display Normals | manual | 1d | 2016-04-11 | 2016-04-11 |  |  |  |  |

| ID | WBS | Task | Duration | Start | Finish | Predecessors | Total slack | Free slack |
| --- | --- | --- | --- | --- | --- | --- | --- | --- |
| 50 | 3.8 | **History Menu Implemented** | 9d | 2016-04-18 | 2016-04-28 | 33 |  |  |
| 51 | 3.8.1 | Slider Under VIZ window implemented | 1w | 2016-04-22 | 2016-04-28 | 53 | 26d |  |
| 52 | 3.8.2 | Can Display list of Current Applied Algorithms | 1d | 2016-04-18 | 2016-04-18 | 33 | 34d |  |
| 53 | 3.8.3 | Can move slider back and forth through algorithm history | 2d | 2016-04-20 | 2016-04-21 | 54 | 26d | 0d |
| 54 | 3.8.4 | Slider updates with latest applied algorithm | 2d | 2016-04-18 | 2016-04-19 | 33 | 26d | 0d |
